Schedule from MS Project, 2019-07-15 to 2020-07-15, costs in $.

## Calendars

- Standard: Mon-Fri 08:00-12:00, 13:00-17:00; Sat-Sun off.

## Resources

| Resource | Rate |
| --- | --- |
| Plant Manager |  |
| Clerk |  |
| Maintenance Manager |  |
| Departmental Managers |  |
| General Manager |  |
| Finance Manager |  |
| Chief Executive Officer |  |
| Project Manager (Maintenance Manager) |  |
| Equipment Representative Employees |  |
| HVAC 3rd Party Maintenance Contract Representatives |  |
| Inhouse Electrician | 35 |
| Cost of Programmable Thermostats | 80 |
| HVAC 3rd Party Maintenance Contract Cost |  |
| Selected Building Construction Contractor's Workers |  |
| Building Construction Contractor Cost |  |
| Temperature Control Louver Cost | 280 |
| Retailer for Motors |  |
| Cost of Motors (100HP) | 6775 |
| 3rd Party Boiler Maintenance Contractor |  |
| 3rd Party Boiler Maintenance Contractor Cost |  |
| Auto Trim Controller Cost (Boiler 1) | 17500 |
| Cost of Insulating Material | 400 |
| Cost of LED Fixtures (Interior) | 225 |
| Inhouse Worker Cost for installing LED Fixtures | 35 |
| IAC Lead Author |  |
| Equipment Representative Employee (HVAC) |  |
| Manufacturing Department Manager |  |
| Equipment Representative Employee (Air Compressor) |  |
| Equipment Representative Employee (Motor) |  |
| Equipment Representative Employee (Boiler) |  |
| 3rd Party Boiler Maintenance Contractor's Worker |  |
| Boiler Team of Inhouse Workers |  |
| Electrical Department Manager |  |
| Equipment Representative Employee (Lighting) |  |
| Auto Trim Controller Cost (Boiler 2) | 15000 |
| Trainee for Boiler Maintenance |  |
| Cost of Additional Accessories | 500 |
| Cost of Occupancy Sensor (Interior) | 13 |
| Cost of LED Fixtures (Exterior) | 225 |
| Cost of Occupancy Sensor (Exterior) | 13 |
| Cost of Motors (60HP) | 4284 |
| Project Manager (Recovery Period) |  |
| Equipment Representative Employee (Boiler) (Supervision Task) |  |
| Project Manager (Searching Equipment/Retailers/Contractor) |  |
| Equipment Representative Employee (Motor) (Supervision Task) |  |

## Schedule

| ID | WBS | Task | Type | Duration | Start | Finish | Predecessors | Baseline start | Baseline finish | Baseline duration | Baseline 1 start | Baseline 1 finish | Total slack | Free slack | Constraint | Resources | Work | Cost | Baseline cost |
| --- | --- | --- | --- | --- | --- | --- | --- | --- | --- | --- | --- | --- | --- | --- | --- | --- | --- | --- | --- |
| 1 | 1 | **Implementation of Energy Assessment Recommendations** |  | 262.38d | 2019-07-15 08:00 | 2020-07-15 11:00 |  | 2019-07-15 08:00 | 2020-07-15 11:00 | 262.38d | 2019-07-15 08:00 | 2020-07-01 11:00 | 0d |  |  |  | 415.83h | 192,552.67 | 192,552.67 |
| 2 | 1.1 | **Management Procedure** |  | 10.75d | 2019-07-15 08:00 | 2019-07-29 15:00 |  | 2019-07-15 08:00 | 2019-07-29 15:00 | 10.75d | 2019-07-15 08:00 | 2019-07-29 15:00 | 116.98d | 0d |  |  | 46.5h |  |  |
| 3 | 1.1.1 | Final IAC report received | milestone | 0d | 2019-07-15 08:00 | 2019-07-15 08:00 |  | 2019-07-15 08:00 | 2019-07-15 08:00 | 0d | 2019-07-15 08:00 | 2019-07-15 08:00 | 119.92d | 0d |  |  |  |  |  |
| 4 | 1.1.2 | Plant manager reads and understands all the recommendation provided in the report |  | 3d | 2019-07-15 08:00 | 2019-07-17 17:00 | 3 | 2019-07-15 08:00 | 2019-07-17 17:00 | 3d | 2019-07-15 08:00 | 2019-07-17 17:00 | 119.92d | 0d |  | Plant Manager | 6h |  |  |
| 5 | 1.1.3 | Pass the report to all departmental managers |  | 15min | 2019-07-18 08:00 | 2019-07-18 08:15 | 4 | 2019-07-18 08:00 | 2019-07-18 08:15 | 15min | 2019-07-18 08:00 | 2019-07-18 08:15 | 119.92d | 0d |  | Clerk | 0.25h |  |  |
| 6 | 1.1.4 | The report is analyzed, and queries are cleared by the phone conference with the IAC’s lead author for the report |  | 2h | 2019-07-18 08:15 | 2019-07-18 10:15 | 5 | 2019-07-18 08:15 | 2019-07-18 10:15 | 2h | 2019-07-18 08:15 | 2019-07-18 10:15 | 119.92d | 0.84d |  | Plant Manager; Maintenance Manager; IAC Lead Author | 6h |  |  |
| 7 | 1.1.5 | Plant manager calls out a staff meeting to discuss the feasibility and urgency of different recommendations |  | 2h | 2019-07-19 09:00 | 2019-07-19 11:00 | 6 | 2019-07-19 09:00 | 2019-07-19 11:00 | 2h | 2019-07-19 09:00 | 2019-07-19 11:00 | 119.07d | 0d | start no earlier than 2019-07-19 09:00 | Departmental Managers; Maintenance Manager; Plant Manager | 6h |  |  |
| 8 | 1.1.6 | The report is passed on to the general manager |  | 15min | 2019-07-19 11:00 | 2019-07-19 11:15 | 7 | 2019-07-19 11:00 | 2019-07-19 11:15 | 15min | 2019-07-19 11:00 | 2019-07-19 11:15 | 119.07d | 1d |  | Clerk | 0.25h |  |  |
| 9 | 1.1.7 | The report is approved and request for the financial resource is made for general manager |  | 1h | 2019-07-22 11:15 | 2019-07-22 13:15 | 8 | 2019-07-22 11:15 | 2019-07-22 13:15 | 1h | 2019-07-22 11:15 | 2019-07-22 13:15 | 118.07d | 0d | start no earlier than 2019-07-22 11:15 | General Manager; Plant Manager | 2h |  |  |
| 10 | 1.1.8 | General manager evaluate the report |  | 3d | 2019-07-22 13:15 | 2019-07-25 13:15 | 9 | 2019-07-22 13:15 | 2019-07-25 13:15 | 3d | 2019-07-22 13:15 | 2019-07-25 13:15 | 118.07d | 0d |  | General Manager | 6h |  |  |
| 11 | 1.1.9 | General manager checks the current year’s budget for energy efficiency funding |  | 2h | 2019-07-25 13:15 | 2019-07-25 15:15 | 10 | 2019-07-25 13:15 | 2019-07-25 15:15 | 2h | 2019-07-25 13:15 | 2019-07-25 15:15 | 118.07d | 0d |  | Finance Manager; General Manager | 4h |  |  |
| 12 | 1.1.10 | Funding approved from CEO and full authority of budget is transferred to general manager |  | 1h | 2019-07-25 15:15 | 2019-07-25 16:15 | 11 | 2019-07-25 15:15 | 2019-07-25 16:15 | 1h | 2019-07-25 15:15 | 2019-07-25 16:15 | 118.07d | 1.09d |  | Chief Executive Officer; General Manager | 2h |  |  |
| 13 | 1.1.11 | Maintenance manager is appointed as the project manager of reducing the total energy bill cost |  | 1h | 2019-07-29 08:00 | 2019-07-29 09:00 | 12 | 2019-07-29 08:00 | 2019-07-29 09:00 | 1h | 2019-07-29 08:00 | 2019-07-29 09:00 | 116.98d | 0d | start no earlier than 2019-07-26 21:00 | General Manager; Project Manager (Maintenance Manager) | 2h |  |  |
| 14 | 1.1.12 | Project manager calls meeting with departmental managers to discuss about availability of manpower |  | 3h | 2019-07-29 09:00 | 2019-07-29 12:00 | 13 | 2019-07-29 09:00 | 2019-07-29 12:00 | 3h | 2019-07-29 09:00 | 2019-07-29 12:00 | 116.98d | 0d |  | Departmental Managers; Project Manager (Maintenance Manager) | 6h |  |  |
| 15 | 1.1.13 | Selected employees are assigned to a particular equipment energy efficiency improvement program |  | 2h | 2019-07-29 13:00 | 2019-07-29 15:00 | 14 | 2019-07-29 13:00 | 2019-07-29 15:00 | 2h | 2019-07-29 13:00 | 2019-07-29 15:00 | 116.98d |  |  | Departmental Managers; Equipment Representative Employees; Project Manager (Maintenance Manager) | 6h |  |  |
| 16 | 1.2 | Budget acceptance and top management procedure completed | milestone | 0d | 2019-07-29 15:00 | 2019-07-29 15:00 | 2 | 2019-07-29 15:00 | 2019-07-29 15:00 | 0d | 2019-07-29 15:00 | 2019-07-29 15:00 | 251.62d |  |  |  |  |  |  |
| 18 | 1.3 | **HVAC recommendations** |  | 56.5d | 2019-08-22 13:00 | 2019-11-08 17:00 | 2 | 2019-08-22 13:00 | 2019-11-08 17:00 | 56.5d | 2019-08-22 13:00 | 2019-11-11 16:00 | 75d | 0d |  |  | 67.67h | 30,850 | 30,850 |
| 19 | 1.3.1 | **Implementing maintenance program** |  | 7.4d | 2019-08-22 13:00 | 2019-09-02 16:10 |  | 2019-08-22 13:00 | 2019-09-02 16:10 | 7.4d | 2019-08-22 13:00 | 2019-09-02 16:10 | 97.98d | 1.98d |  |  | 21.67h | 30,000 | 30,000 |
| 20 | 1.3.1.1 | Searching nearby 3rd party HVAC maintenance and repair company |  | 1.25d | 2019-08-22 13:00 | 2019-08-29 12:00 |  | 2019-08-22 13:00 | 2019-08-29 12:00 | 1.25d | 2019-08-22 13:00 | 2019-08-29 12:00 | 99.23d | 0d | finish no earlier than 2019-08-29 12:00 | Project Manager (Searching Equipment/Retailers/Contractor) | 10h |  |  |
| 21 | 1.3.1.2 | Gathering more detail about the shortlisted 3rd party maintenance company |  | 4h | 2019-08-29 13:00 | 2019-08-29 17:00 | 20 | 2019-08-29 13:00 | 2019-08-29 17:00 | 4h | 2019-08-29 13:00 | 2019-08-29 17:00 | 99.23d | 0d |  | Equipment Representative Employee (HVAC); Project Manager (Maintenance Manager) | 4h |  |  |
| 22 | 1.3.1.3 | Meeting of project manager, department manager and assigned HVAC system employee to finalize the most reliable and reasonable company |  | 1h | 2019-08-30 08:00 | 2019-08-30 09:00 | 21 | 2019-08-30 08:00 | 2019-08-30 09:00 | 1h | 2019-08-30 08:00 | 2019-08-30 09:00 | 99.23d | 0d |  | Project Manager (Maintenance Manager); Equipment Representative Employee (HVAC); Manufacturing Department Manager | 3h |  |  |
| 23 | 1.3.1.4 | Contacting finalized 3rd party maintenance company to organize a meeting |  | 30min | 2019-08-30 09:00 | 2019-08-30 09:30 | 22 | 2019-08-30 09:00 | 2019-08-30 09:30 | 30min | 2019-08-30 09:00 | 2019-08-30 09:30 | 99.23d | 0d |  | HVAC 3rd Party Maintenance Contract Representatives; Project Manager (Maintenance Manager) | 0.5h |  |  |
| 24 | 1.3.1.5 | Meeting schedule is finalized |  | 30min | 2019-08-30 09:30 | 2019-08-30 10:00 | 23 | 2019-08-30 09:30 | 2019-08-30 10:00 | 30min | 2019-08-30 09:30 | 2019-08-30 10:00 | 99.23d | 1.25d |  | HVAC 3rd Party Maintenance Contract Representatives; Project Manager (Maintenance Manager) | 1h |  |  |
| 25 | 1.3.1.6 | Meeting with 3rd party maintenance company |  | 3h | 2019-09-02 13:00 | 2019-09-02 16:00 | 24 | 2019-09-02 13:00 | 2019-09-02 16:00 | 3h | 2019-09-02 13:00 | 2019-09-02 16:00 | 97.98d | 0d | start no earlier than 2019-09-02 13:00 | Equipment Representative Employee (HVAC); HVAC 3rd Party Maintenance Contract Representatives; Manufacturing Department Manager; Project Manager (Maintenance Manager) | 3h |  |  |
| 26 | 1.3.1.7 | Signing contract with agreed terms and conditions |  | 10min | 2019-09-02 16:00 | 2019-09-02 16:10 | 25 | 2019-09-02 16:00 | 2019-09-02 16:10 | 10min | 2019-09-02 16:00 | 2019-09-02 16:10 | 97.98d |  |  | HVAC 3rd Party Maintenance Contract Cost [0.1%]; Project Manager (Maintenance Manager) | 0.17h | 30,000 | 30,000 |
| 27 | 1.3.2 | Recovery time period if recommendation not finished on time |  | 1.25d | 2019-09-04 16:00 | 2019-09-17 17:00 | 19 | 2019-09-04 16:00 | 2019-09-17 17:00 | 1.25d | 2019-09-03 16:00 | 2019-09-17 16:00 | 96d | 0.5d | finish no earlier than 2019-09-17 17:00 | Project Manager (Recovery Period) | 10h |  |  |

| ID | WBS | Task | Type | Duration | Start | Finish | Predecessors | Baseline start | Baseline finish | Baseline duration | Baseline 1 start | Baseline 1 finish | Total slack | Free slack | Constraint | Resources | Work | Cost | Baseline cost |
| --- | --- | --- | --- | --- | --- | --- | --- | --- | --- | --- | --- | --- | --- | --- | --- | --- | --- | --- | --- |
| 28 | 1.3.3 | **Office area night set back programmable thermostat installation** |  | 28.38d | 2019-09-18 13:00 | 2019-10-28 16:00 | 27 | 2019-09-18 13:00 | 2019-10-28 16:00 | 28.38d | 2019-09-18 08:00 | 2019-10-28 16:00 | 75d | 0d |  |  | 26h | 850 | 850 |
| 29 | 1.3.3.1 | Searching reliable cost effective and good quality of programmable thermostat |  | 1.25d | 2019-09-18 13:00 | 2019-09-24 15:00 |  | 2019-09-18 13:00 | 2019-09-24 15:00 | 1.25d | 2019-09-18 08:00 | 2019-09-24 17:00 | 96d | 0d | start no earlier than 2019-09-18 08:00 | Project Manager (Searching Equipment/Retailers/Contractor) | 10h |  |  |
| 30 | 1.3.3.2 | Contacting retailers to gather more information about bulk discount |  | 4h | 2019-09-24 15:00 | 2019-09-25 10:00 | 29 | 2019-09-24 15:00 | 2019-09-25 10:00 | 4h | 2019-09-25 08:00 | 2019-09-25 12:00 | 96.44d | 14.88d |  | Equipment Representative Employee (HVAC); Project Manager (Maintenance Manager) | 4h |  |  |
| 31 | 1.3.3.3 | Meeting of project manager, department manager and assigned HVAC system representative employee to finalize the programmable thermostat |  | 2h | 2019-10-16 09:00 | 2019-10-16 11:00 | 30 | 2019-10-16 09:00 | 2019-10-16 11:00 | 2h | 2019-10-16 09:00 | 2019-10-16 11:00 | 81.56d | 0d | start no earlier than 2019-10-16 09:00 | Equipment Representative Employee (HVAC); Manufacturing Department Manager; Project Manager (Maintenance Manager) | 2h |  |  |
| 32 | 1.3.3.4 | Budget request to project manager for buying programmable thermostat |  | 30min | 2019-10-16 11:00 | 2019-10-16 11:30 | 31 | 2019-10-16 11:00 | 2019-10-16 11:30 | 30min | 2019-10-16 11:00 | 2019-10-16 11:30 | 81.56d | 0d |  | Project Manager (Maintenance Manager) | 0.5h |  |  |
| 33 | 1.3.3.5 | Budget request is sent to General Manager for approval |  | 30min | 2019-10-16 11:30 | 2019-10-16 12:00 | 32 | 2019-10-16 11:30 | 2019-10-16 12:00 | 30min | 2019-10-16 11:30 | 2019-10-16 12:00 | 81.56d | 1d |  | Clerk | 0.5h |  |  |
| 34 | 1.3.3.6 | Budget request granted from General Manager |  | 1h | 2019-10-17 13:00 | 2019-10-17 14:00 | 33 | 2019-10-17 13:00 | 2019-10-17 14:00 | 1h | 2019-10-17 13:00 | 2019-10-17 14:00 | 80.56d | 0d | start no earlier than 2019-10-17 13:00 | General Manager | 1h |  |  |
| 35 | 1.3.3.7 | Order placed for programmable thermostats |  | 30min | 2019-10-17 14:00 | 2019-10-17 14:30 | 34 | 2019-10-17 14:00 | 2019-10-17 14:30 | 30min | 2019-10-17 14:00 | 2019-10-17 14:30 | 80.56d | 5d |  | Project Manager (Maintenance Manager); Cost of Programmable Thermostats [800%] | 0.5h | 640 | 640 |
| 36 | 1.3.3.8 | Shipment received for programmable thermostats |  | 1h | 2019-10-24 14:30 | 2019-10-24 15:30 | 35 | 2019-10-24 14:30 | 2019-10-24 15:30 | 1h | 2019-10-24 14:30 | 2019-10-24 15:30 | 75.56d | 0d | start no earlier than 2019-10-24 14:30 | Clerk | 1h |  |  |
| 37 | 1.3.3.9 | Contacting inhouse electrician to finalize when the thermostats are to be installed |  | 1h | 2019-10-24 15:30 | 2019-10-24 16:30 | 36 | 2019-10-24 15:30 | 2019-10-24 16:30 | 1h | 2019-10-24 15:30 | 2019-10-24 16:30 | 75.56d | 0.56d |  | Inhouse Electrician; Project Manager (Maintenance Manager) | 0.5h |  |  |
| 38 | 1.3.3.10 | Install all the programmable thermostats |  | 10h | 2019-10-25 13:00 | 2019-10-28 15:00 | 37 | 2019-10-25 13:00 | 2019-10-28 15:00 | 10h | 2019-10-25 13:00 | 2019-10-28 15:00 | 75d | 0d | finish no earlier than 2019-10-28 15:00 | Equipment Representative Employee (HVAC); Inhouse Electrician | 5h | 175 | 175 |
| 39 | 1.3.3.11 | Program thermostat according to summer season night set back temperature settings |  | 1h | 2019-10-28 15:00 | 2019-10-28 16:00 | 38 | 2019-10-28 15:00 | 2019-10-28 16:00 | 1h | 2019-10-28 15:00 | 2019-10-28 16:00 | 75d |  |  | Inhouse Electrician | 1h | 35 | 35 |
| 40 | 1.3.4 | Recovery time period if recommendation not finished on time |  | 1.25d | 2019-10-28 16:00 | 2019-11-08 17:00 | 28 | 2019-10-28 16:00 | 2019-11-08 17:00 | 1.25d | 2019-10-28 16:00 | 2019-11-11 16:00 | 75d |  | finish no earlier than 2019-11-07 17:00 | Project Manager (Recovery Period) | 10h |  |  |
| 41 | 1.4 | HVAC Recommendations Completed | milestone | 0d | 2019-11-08 17:00 | 2019-11-08 17:00 | 18 | 2019-11-08 17:00 | 2019-11-08 17:00 | 0d | 2019-11-11 16:00 | 2019-11-11 16:00 | 75.71d | 0.5d |  |  |  |  |  |
| 43 | 1.5 | **Air Compressor Recommendations** |  | 40.5d | 2019-11-11 13:00 | 2020-01-06 17:00 | 41 | 2019-11-11 13:00 | 2020-01-06 17:00 | 40.5d | 2019-11-11 16:00 | 2020-01-06 16:15 | 64d | 0d |  |  | 116.83h | 1,280 | 1,280 |
| 44 | 1.5.1 | **Installing the fresh air intake louvers in the air compressor room** |  | 14.44d | 2019-11-11 13:00 | 2019-11-29 16:30 |  | 2019-11-11 13:00 | 2019-11-29 16:30 | 14.44d | 2019-11-11 16:00 | 2019-11-29 16:30 | 70.94d | 0.94d |  |  | 47.33h | 1,280 | 1,280 |
| 45 | 1.5.1.1 | Searching most reliable and cost-effective automatic temperature control air intake louver for Air Compressor room |  | 1.25d | 2019-11-11 13:00 | 2019-11-15 15:00 |  | 2019-11-11 13:00 | 2019-11-15 15:00 | 1.25d | 2019-11-11 16:00 | 2019-11-18 16:00 | 75.21d | 0.5d |  | Project Manager (Searching Equipment/Retailers/Contractor) | 10h |  |  |
| 46 | 1.5.1.2 | Selecting the louvers |  | 4h | 2019-11-18 10:00 | 2019-11-18 15:00 | 45 | 2019-11-18 10:00 | 2019-11-18 15:00 | 4h | 2019-11-18 16:00 | 2019-11-19 11:00 | 75.46d | 0d | start no earlier than 2019-11-18 10:00 | Project Manager (Maintenance Manager) | 4h |  |  |
| 47 | 1.5.1.3 | Budget request to General manager followed by plant manager |  | 1h | 2019-11-18 15:00 | 2019-11-18 16:00 | 46 | 2019-11-18 15:00 | 2019-11-18 16:00 | 1h | 2019-11-19 11:00 | 2019-11-19 12:00 | 75.46d | 0d |  | General Manager; Plant Manager; Project Manager (Maintenance Manager) | 1h |  |  |
| 48 | 1.5.1.4 | Budget request granted to buy louvers from General manager |  | 20min | 2019-11-18 16:00 | 2019-11-18 16:20 | 47 | 2019-11-18 16:00 | 2019-11-18 16:20 | 20min | 2019-11-19 13:00 | 2019-11-19 13:20 | 75.46d | 0d |  | General Manager | 0.33h |  |  |
| 49 | 1.5.1.5 | Order placed of louvers |  | 30min | 2019-11-18 16:20 | 2019-11-18 16:50 | 48 | 2019-11-18 16:20 | 2019-11-18 16:50 | 30min | 2019-11-19 13:20 | 2019-11-19 13:50 | 75.46d | 4.52d |  | Project Manager (Maintenance Manager); Temperature Control Louver Cost | 0.5h | 280 | 280 |
| 50 | 1.5.1.6 | Shipment received and stored in storage area |  | 1h | 2019-11-25 13:00 | 2019-11-25 14:00 | 49 | 2019-11-25 13:00 | 2019-11-25 14:00 | 1h | 2019-11-25 13:00 | 2019-11-25 14:00 | 70.94d | 0d | start no earlier than 2019-11-25 13:00 | Clerk | 1h |  |  |
| 51 | 1.5.1.7 | Searching nearby reliable construction and demolition contractor |  | 1d | 2019-11-25 14:00 | 2019-11-26 14:00 | 50 | 2019-11-25 14:00 | 2019-11-26 14:00 | 1d | 2019-11-25 14:00 | 2019-11-26 14:00 | 70.94d | 0d |  | Project Manager (Maintenance Manager) | 4h |  |  |
| 52 | 1.5.1.8 | Selecting the contractor |  | 3h | 2019-11-26 14:00 | 2019-11-26 17:00 | 51 | 2019-11-26 14:00 | 2019-11-26 17:00 | 3h | 2019-11-26 14:00 | 2019-11-26 17:00 | 70.94d | 0d |  | Project Manager (Maintenance Manager); Building Construction Contractor Cost [0.1%] | 3h | 1,000 | 1,000 |
| 53 | 1.5.1.9 | Making section in the Air Compressor room according to the dimensions of selected louvers |  | 2.5d | 2019-11-27 08:00 | 2019-11-29 12:00 | 52 | 2019-11-27 08:00 | 2019-11-29 12:00 | 2.5d | 2019-11-27 08:00 | 2019-11-29 12:00 | 70.94d | 0d |  | Selected Building Construction Contractor's Workers | 20h |  |  |
| 54 | 1.5.1.10 | Installing louvers into the section of the wall |  | 3h | 2019-11-29 13:00 | 2019-11-29 16:00 | 53 | 2019-11-29 13:00 | 2019-11-29 16:00 | 3h | 2019-11-29 13:00 | 2019-11-29 16:00 | 70.94d | 0d |  | Selected Building Construction Contractor's Workers | 3h |  |  |
| 55 | 1.5.1.11 | Recommended temperature is set for the operation of automatic temperature control louvers |  | 30min | 2019-11-29 16:00 | 2019-11-29 16:30 | 54 | 2019-11-29 16:00 | 2019-11-29 16:30 | 30min | 2019-11-29 16:00 | 2019-11-29 16:30 | 70.94d |  |  | Equipment Representative Employee (HVAC); Project Manager (Maintenance Manager) | 0.5h |  |  |
| 56 | 1.5.2 | Recovery time period if recommendation not finished on time |  | 1.25d | 2019-12-02 16:00 | 2019-12-13 17:00 | 44 | 2019-12-02 16:00 | 2019-12-13 17:00 | 1.25d | 2019-11-29 16:30 | 2019-12-13 16:30 | 70d | 0.12d | start no earlier than 2019-12-02 16:00 | Project Manager (Recovery Period) | 10h |  |  |

| ID | WBS | Task | Type | Duration | Start | Finish | Predecessors | Baseline start | Baseline finish | Baseline duration | Baseline 1 start | Baseline 1 finish | Total slack | Free slack | Constraint | Resources | Work | Cost | Baseline cost |
| --- | --- | --- | --- | --- | --- | --- | --- | --- | --- | --- | --- | --- | --- | --- | --- | --- | --- | --- | --- |
| 57 | 1.5.3 | **Reducing the set air pressure by 5 psi** |  | 4.78d | 2019-12-16 09:00 | 2019-12-20 16:15 | 56 | 2019-12-16 09:00 | 2019-12-20 16:15 | 4.78d | 2019-12-16 09:00 | 2019-12-20 16:15 | 65.97d | 1.97d |  |  | 49.5h |  |  |
| 58 | 1.5.3.1 | Meeting of project manager, department manager and assigned Air Compressor system representative employee to plan a procedure to reduce the set air pressure |  | 2h | 2019-12-16 09:00 | 2019-12-16 11:00 |  | 2019-12-16 09:00 | 2019-12-16 11:00 | 2h | 2019-12-16 09:00 | 2019-12-16 11:00 | 69.97d | 0.12d | start no earlier than 2019-12-16 09:00 | Equipment Representative Employee (Air Compressor); Manufacturing Department Manager; Project Manager (Maintenance Manager) | 2h |  |  |
| 59 | 1.5.3.2 | **Reduce air pressure by 1psi** |  | 4.03d | 2019-12-16 13:00 | 2019-12-20 13:15 |  | 2019-12-16 13:00 | 2019-12-20 13:15 | 4.03d | 2019-12-16 13:00 | 2019-12-20 13:15 | 65.97d |  |  |  | 2.5h |  |  |
| 60 | 1.5.3.2.1 | Reduce air pressure by 1psi 1 |  | 15min | 2019-12-16 13:00 | 2019-12-16 13:15 | 58 | 2019-12-16 13:00 | 2019-12-16 13:15 | 15min | 2019-12-16 13:00 | 2019-12-16 13:15 | 69.84d | 0d | start no earlier than 2019-12-16 13:00 | Equipment Representative Employee (Air Compressor); Project Manager (Maintenance Manager) | 0.5h |  |  |
| 61 | 1.5.3.2.2 | Reduce air pressure by 1psi 2 |  | 15min | 2019-12-17 13:00 | 2019-12-17 13:15 | 60 | 2019-12-17 13:00 | 2019-12-17 13:15 | 15min | 2019-12-17 13:00 | 2019-12-17 13:15 | 68.88d | 0d | start no earlier than 2019-12-17 13:00 | Equipment Representative Employee (Air Compressor); Project Manager (Maintenance Manager) | 0.5h |  |  |
| 62 | 1.5.3.2.3 | Reduce air pressure by 1psi 3 |  | 15min | 2019-12-18 13:00 | 2019-12-18 13:15 | 61 | 2019-12-18 13:00 | 2019-12-18 13:15 | 15min | 2019-12-18 13:00 | 2019-12-18 13:15 | 67.91d | 0d | start no earlier than 2019-12-18 13:00 | Equipment Representative Employee (Air Compressor); Project Manager (Maintenance Manager) | 0.5h |  |  |
| 63 | 1.5.3.2.4 | Reduce air pressure by 1psi 4 |  | 15min | 2019-12-19 13:00 | 2019-12-19 13:15 | 62 | 2019-12-19 13:00 | 2019-12-19 13:15 | 15min | 2019-12-19 13:00 | 2019-12-19 13:15 | 66.94d | 0d | start no earlier than 2019-12-19 13:00 | Equipment Representative Employee (Air Compressor); Project Manager (Maintenance Manager) | 0.5h |  |  |
| 64 | 1.5.3.2.5 | Reduce air pressure by 1psi 5 |  | 15min | 2019-12-20 13:00 | 2019-12-20 13:15 | 63 | 2019-12-20 13:00 | 2019-12-20 13:15 | 15min | 2019-12-20 13:00 | 2019-12-20 13:15 | 65.97d | 0d | start no earlier than 2019-12-20 13:00 | Equipment Representative Employee (Air Compressor); Project Manager (Maintenance Manager) | 0.5h |  |  |
| 65 | 1.5.3.3 | **Observe if any trouble occurs in the manufacturing process throughout the plant** |  | 4.38d | 2019-12-16 13:15 | 2019-12-20 16:15 |  | 2019-12-16 13:15 | 2019-12-20 16:15 | 4.38d | 2019-12-16 13:15 | 2019-12-20 16:15 | 65.97d |  |  |  | 45h |  |  |
| 66 | 1.5.3.3.1 | Observe if any trouble occurs in the manufacturing process throughout the plant 1 |  | 3h | 2019-12-16 13:15 | 2019-12-16 16:15 | 60 | 2019-12-16 13:15 | 2019-12-16 16:15 | 3h | 2019-12-16 13:15 | 2019-12-16 16:15 | 69.97d |  | start no earlier than 2019-07-15 10:00 | Equipment Representative Employee (Air Compressor); Manufacturing Department Manager; Project Manager (Maintenance Manager) | 9h |  |  |
| 67 | 1.5.3.3.2 | Observe if any trouble occurs in the manufacturing process throughout the plant 2 |  | 3h | 2019-12-17 13:15 | 2019-12-17 16:15 | 61 | 2019-12-17 13:15 | 2019-12-17 16:15 | 3h | 2019-12-17 13:15 | 2019-12-17 16:15 | 68.97d |  | start no earlier than 2019-07-16 10:00 | Equipment Representative Employee (Air Compressor); Manufacturing Department Manager; Project Manager (Maintenance Manager) | 9h |  |  |
| 68 | 1.5.3.3.3 | Observe if any trouble occurs in the manufacturing process throughout the plant 3 |  | 3h | 2019-12-18 13:15 | 2019-12-18 16:15 | 62 | 2019-12-18 13:15 | 2019-12-18 16:15 | 3h | 2019-12-18 13:15 | 2019-12-18 16:15 | 67.97d |  | start no earlier than 2019-07-17 10:00 | Equipment Representative Employee (Air Compressor); Manufacturing Department Manager; Project Manager (Maintenance Manager) | 9h |  |  |
| 69 | 1.5.3.3.4 | Observe if any trouble occurs in the manufacturing process throughout the plant 4 |  | 3h | 2019-12-19 13:15 | 2019-12-19 16:15 | 63 | 2019-12-19 13:15 | 2019-12-19 16:15 | 3h | 2019-12-19 13:15 | 2019-12-19 16:15 | 66.97d |  | start no earlier than 2019-07-18 10:00 | Equipment Representative Employee (Air Compressor); Manufacturing Department Manager; Project Manager (Maintenance Manager) | 9h |  |  |
| 70 | 1.5.3.3.5 | Observe if any trouble occurs in the manufacturing process throughout the plant 5 |  | 3h | 2019-12-20 13:15 | 2019-12-20 16:15 | 64 | 2019-12-20 13:15 | 2019-12-20 16:15 | 3h | 2019-12-20 13:15 | 2019-12-20 16:15 | 65.97d |  | start no earlier than 2019-07-19 10:00 | Equipment Representative Employee (Air Compressor); Manufacturing Department Manager; Project Manager (Maintenance Manager) | 9h |  |  |
| 71 | 1.5.4 | Recovery time period if recommendation not finished on time |  | 1.25d | 2019-12-24 16:00 | 2020-01-06 17:00 | 57 | 2019-12-24 16:00 | 2020-01-06 17:00 | 1.25d | 2019-12-23 16:15 | 2020-01-06 16:15 | 64d |  | start no earlier than 2019-12-24 16:00 | Project Manager (Recovery Period) | 10h |  |  |
| 72 | 1.6 | Air Compressor Recommendations Completed | milestone | 0d | 2020-01-06 17:00 | 2020-01-06 17:00 | 43 | 2020-01-06 17:00 | 2020-01-06 17:00 | 0d | 2020-01-06 16:15 | 2020-01-06 16:15 | 64.25d | 0.12d |  |  |  |  |  |
| 74 | 1.7 | **Motor Recommendations** |  | 25.88d | 2020-01-07 09:00 | 2020-02-11 17:00 | 72 | 2020-01-07 09:00 | 2020-02-11 17:00 | 25.88d | 2020-01-07 09:00 | 2020-02-12 16:00 | 57d | 0d |  |  | 48h | 22,433 | 22,433 |
| 75 | 1.7.1 | **Replacing oversized and undersized motors depending upon requirements** |  | 15.62d | 2020-01-07 09:00 | 2020-01-28 15:00 |  | 2020-01-07 09:00 | 2020-01-28 15:00 | 15.62d | 2020-01-07 09:00 | 2020-01-29 10:00 | 58d | 1.12d |  |  | 38h | 22,433 | 22,433 |
| 76 | 1.7.1.1 | Making a list of motors which are to be replaced from the reference of IAC report |  | 3h | 2020-01-07 09:00 | 2020-01-07 12:00 |  | 2020-01-07 09:00 | 2020-01-07 12:00 | 3h | 2020-01-07 09:00 | 2020-01-07 12:00 | 64.12d | 0d | start no earlier than 2020-01-07 09:00 | Project Manager (Maintenance Manager); Equipment Representative Employee (Motor) | 6h |  |  |
| 77 | 1.7.1.2 | Searching the most reliable and cost-effective motors with the same specifications as recommended in the IAC report |  | 1.25d | 2020-01-07 13:00 | 2020-01-13 15:00 | 76 | 2020-01-07 13:00 | 2020-01-13 15:00 | 1.25d | 2020-01-07 13:00 | 2020-01-14 12:00 | 64.12d | 1.5d |  | Project Manager (Searching Equipment/Retailers/Contractor) | 10h |  |  |
| 78 | 1.7.1.3 | Budget request to General Manager followed by plant manager |  | 2h | 2020-01-15 10:00 | 2020-01-15 12:00 | 77 | 2020-01-15 10:00 | 2020-01-15 12:00 | 2h | 2020-01-15 10:00 | 2020-01-15 12:00 | 63.38d | 0d | start no earlier than 2020-01-15 10:00 | General Manager; Plant Manager; Project Manager (Maintenance Manager) | 2h |  |  |
| 79 | 1.7.1.4 | Budget request granted to buy all the motors from General manager |  | 1h | 2020-01-15 13:00 | 2020-01-15 14:00 | 78 | 2020-01-15 13:00 | 2020-01-15 14:00 | 1h | 2020-01-15 13:00 | 2020-01-15 14:00 | 63.38d | 0d |  | General Manager | 1h |  |  |
| 80 | 1.7.1.5 | Order placed of the motors |  | 1h | 2020-01-15 14:00 | 2020-01-15 15:00 | 79 | 2020-01-15 14:00 | 2020-01-15 15:00 | 1h | 2020-01-15 14:00 | 2020-01-15 15:00 | 63.38d | 5.12d |  | Project Manager (Maintenance Manager); Cost of Motors (100HP) [200%]; Cost of Motors (60HP) [200%] | 1h | 22,118 | 22,118 |
| 81 | 1.7.1.6 | Shipment received and stored in storage area |  | 1h | 2020-01-22 16:00 | 2020-01-22 17:00 | 80 | 2020-01-22 16:00 | 2020-01-22 17:00 | 1h | 2020-01-22 16:00 | 2020-01-22 17:00 | 58.25d | 0d | start no earlier than 2020-01-22 16:00 | Clerk | 1h |  |  |
| 82 | 1.7.1.7 | Stop the power supply and other safety measures are also taken care of to replace the motor from a specific location |  | 2h | 2020-01-23 08:00 | 2020-01-23 10:00 | 81 | 2020-01-23 08:00 | 2020-01-23 10:00 | 2h | 2020-01-23 08:00 | 2020-01-23 10:00 | 58.25d | 0d |  | Equipment Representative Employee (Motor); Inhouse Electrician; Project Manager (Maintenance Manager) | 3h | 35 | 35 |
| 83 | 1.7.1.8 | Unplug the motor from the system |  | 2h | 2020-01-23 10:00 | 2020-01-23 12:00 | 82 | 2020-01-23 10:00 | 2020-01-23 12:00 | 2h | 2020-01-23 10:00 | 2020-01-23 12:00 | 58.25d | 0d |  | Inhouse Electrician | 2h | 70 | 70 |
| 84 | 1.7.1.9 | Installing the new motor of recommended specifications |  | 6h | 2020-01-23 13:00 | 2020-01-24 10:00 | 83 | 2020-01-23 13:00 | 2020-01-24 10:00 | 6h | 2020-01-23 13:00 | 2020-01-24 10:00 | 58.25d | 0.25d |  | Inhouse Electrician | 6h | 210 | 210 |
| 85 | 1.7.1.10 | Observe the manufacturing process and check if any trouble occurs |  | 0.75d | 2020-01-24 13:00 | 2020-01-28 15:00 | 84 | 2020-01-24 13:00 | 2020-01-28 15:00 | 0.75d | 2020-01-24 10:00 | 2020-01-29 10:00 | 58d |  |  | Equipment Representative Employee (Motor) (Supervision Task) | 6h |  |  |
| 86 | 1.7.2 | Recovery time period if recommendation not finished on time |  | 1.25d | 2020-01-29 16:00 | 2020-02-11 17:00 | 75 | 2020-01-29 16:00 | 2020-02-11 17:00 | 1.25d | 2020-01-29 16:00 | 2020-02-12 16:00 | 57d |  | start no earlier than 2020-01-29 16:00 | Project Manager (Recovery Period) | 10h |  |  |
| 87 | 1.8 | Motor Recommendations Completed | milestone | 0d | 2020-02-11 17:00 | 2020-02-11 17:00 | 74 | 2020-02-11 17:00 | 2020-02-11 17:00 | 0d | 2020-02-12 16:00 | 2020-02-12 16:00 | 110.38d |  |  |  |  |  |  |

| ID | WBS | Task | Type | Duration | Start | Finish | Predecessors | Baseline start | Baseline finish | Baseline duration | Baseline 1 start | Baseline 1 finish | Total slack | Free slack | Constraint | Resources | Work | Cost | Baseline cost |
| --- | --- | --- | --- | --- | --- | --- | --- | --- | --- | --- | --- | --- | --- | --- | --- | --- | --- | --- | --- |
| 89 | 1.9 | **Boiler Recommendations** |  | 50.5d | 2020-02-13 13:00 | 2020-04-23 17:00 | 74 | 2020-02-13 13:00 | 2020-04-23 17:00 | 50.5d | 2020-02-13 13:00 | 2020-04-24 16:00 | 36d | 0d |  |  | 67.33h | 76,820 | 76,820 |
| 90 | 1.9.1 | **Install Boiler Auto Trim Controller for fine tuning of proper air/fuel ratio** |  | 20d | 2020-02-13 13:00 | 2020-03-12 12:00 |  | 2020-02-13 13:00 | 2020-03-12 12:00 | 20d | 2020-02-13 13:00 | 2020-03-12 17:00 | 45.38d | 2.38d |  |  | 29.83h | 72,400 | 72,400 |
| 91 | 1.9.1.1 | First meeting with the head of boiler operations and discussing the proper product for boiler auto trim controller and finalizing the product to buy |  | 3h | 2020-02-13 13:00 | 2020-02-13 16:00 |  | 2020-02-13 13:00 | 2020-02-13 16:00 | 3h | 2020-02-13 13:00 | 2020-02-13 16:00 | 55.94d | 0.38d | start no earlier than 2020-02-13 13:00 | Equipment Representative Employee (Boiler); Project Manager (Maintenance Manager) | 3h |  |  |
| 92 | 1.9.1.2 | Contacting third party contractors and gaining more ideas about the availability of good quality of auto trim controller |  | 4h | 2020-02-14 10:00 | 2020-02-14 15:00 | 91 | 2020-02-14 10:00 | 2020-02-14 15:00 | 4h | 2020-02-14 10:00 | 2020-02-14 15:00 | 55.56d | 0d | start no earlier than 2020-02-14 10:00 | 3rd Party Boiler Maintenance Contractor [50%]; Project Manager (Maintenance Manager) [50%] | 4h |  |  |
| 93 | 1.9.1.3 | Finalizing the formal contractual terms like discounts availability, training for boiler operators, installation and conclusion of the auto rim controller to be bought |  | 3h | 2020-02-14 15:00 | 2020-02-17 09:00 | 92 | 2020-02-14 15:00 | 2020-02-17 09:00 | 3h | 2020-02-14 15:00 | 2020-02-17 09:00 | 55.56d | 4.38d |  | 3rd Party Boiler Maintenance Contractor; Project Manager (Maintenance Manager) | 3h |  |  |
| 94 | 1.9.1.4 | Meeting of project manager, department manager and assigned boiler operations system representative employee to finalize the auto trim controller to be bought |  | 3h | 2020-02-21 13:00 | 2020-02-21 16:00 | 93 | 2020-02-21 13:00 | 2020-02-21 16:00 | 3h | 2020-02-21 13:00 | 2020-02-21 16:00 | 51.19d | 0d | start no earlier than 2020-02-21 13:00 | Equipment Representative Employee (Boiler); Manufacturing Department Manager; Project Manager (Maintenance Manager) | 3h |  |  |
| 95 | 1.9.1.5 | Budget request is sent to General Manager for approval |  | 1h | 2020-02-21 16:00 | 2020-02-21 17:00 | 94 | 2020-02-21 16:00 | 2020-02-21 17:00 | 1h | 2020-02-21 16:00 | 2020-02-21 17:00 | 51.19d | 0.5d |  | Project Manager (Maintenance Manager) | 1h |  |  |
| 96 | 1.9.1.6 | Budget request granted from General Manager |  | 30min | 2020-02-24 13:00 | 2020-02-24 13:30 | 95 | 2020-02-24 13:00 | 2020-02-24 13:30 | 30min | 2020-02-24 13:00 | 2020-02-24 13:30 | 50.69d | 0d | start no earlier than 2020-02-24 13:00 | General Manager | 0.5h |  |  |
| 97 | 1.9.1.7 | Order placed for auto trim controller and installation team from third party contractors |  | 1h | 2020-02-24 13:30 | 2020-02-24 14:30 | 96 | 2020-02-24 13:30 | 2020-02-24 14:30 | 1h | 2020-02-24 13:30 | 2020-02-24 14:30 | 50.69d | 5.56d |  | 3rd Party Boiler Maintenance Contractor Cost [0.1%]; Auto Trim Controller Cost (Boiler 1); Project Manager (Maintenance Manager); Auto Trim Controller Cost (Boiler 2) | 0.33h | 69,900 | 69,900 |
| 98 | 1.9.1.8 | Shipment received for auto trim controller |  | 1h | 2020-03-03 10:00 | 2020-03-03 11:00 | 97 | 2020-03-03 10:00 | 2020-03-03 11:00 | 1h | 2020-03-03 10:00 | 2020-03-03 11:00 | 45.12d | 0d | start no earlier than 2020-03-03 10:00 | Clerk | 1h |  |  |
| 99 | 1.9.1.9 | Third party contractor’s installation team arrival and Installation of boiler auto trim controller |  | 8h | 2020-03-03 11:00 | 2020-03-04 11:00 | 98 | 2020-03-03 11:00 | 2020-03-04 11:00 | 8h | 2020-03-03 11:00 | 2020-03-04 11:00 | 45.12d | 0.12d |  | 3rd Party Boiler Maintenance Contractor's Worker | 8h |  |  |
| 100 | 1.9.1.10 | A critical task of observing and maintaining the boiler efficiency with many factors which can influence boiler efficiency |  | 0.75d | 2020-03-04 13:00 | 2020-03-05 16:00 | 99 | 2020-03-04 13:00 | 2020-03-05 16:00 | 0.75d | 2020-03-04 11:00 | 2020-03-06 11:00 | 45d | 0d |  | Equipment Representative Employee (Boiler) (Supervision Task) | 6h |  |  |
| 101 | 1.9.1.11 | Training for in house boiler operator |  | 5h | 2020-03-11 16:00 | 2020-03-12 12:00 | 100FS+4d | 2020-03-11 16:00 | 2020-03-12 12:00 | 5h | 2020-03-12 11:00 | 2020-03-12 17:00 | 45.38d |  |  | Trainee for Boiler Maintenance [0.1%] |  | 2,500 | 2,500 |
| 102 | 1.9.2 | Recovery time period if recommendation not finished on time |  | 1.25d | 2020-03-16 16:00 | 2020-03-27 17:00 | 90 | 2020-03-16 16:00 | 2020-03-27 17:00 | 1.25d | 2020-03-13 08:00 | 2020-03-26 17:00 | 43d | 0d | start no earlier than 2020-03-13 17:00 | Project Manager (Recovery Period) | 10h |  |  |
| 103 | 1.9.3 | **Insulation of steam pipe wherever insulation is required** |  | 9.88d | 2020-03-30 08:00 | 2020-04-10 16:00 | 102 | 2020-03-30 08:00 | 2020-04-10 16:00 | 9.88d | 2020-03-27 09:00 | 2020-04-10 16:00 | 36d | 0d |  |  | 17.5h | 4,420 | 4,420 |
| 104 | 1.9.3.1 | First meeting with the head of boiler operations and discussing the proper product for insulating the steam pipe and finalizing the product to buy |  | 3h | 2020-03-30 08:00 | 2020-03-30 11:00 |  | 2020-03-30 08:00 | 2020-03-30 11:00 | 3h | 2020-03-27 09:00 | 2020-03-27 12:00 | 43.44d | 0.12d | start no earlier than 2020-03-27 09:00 | Equipment Representative Employee (Boiler); Project Manager (Maintenance Manager) | 3h |  |  |
| 105 | 1.9.3.2 | Meeting of project manager, department manager and assigned boiler operations system representative employee to finalize the insulation material to be bought |  | 3h | 2020-03-30 13:00 | 2020-03-30 16:00 | 104 | 2020-03-30 13:00 | 2020-03-30 16:00 | 3h | 2020-03-30 13:00 | 2020-03-30 16:00 | 43.31d | 0d | start no earlier than 2020-03-30 13:00 | Equipment Representative Employee (Boiler); Project Manager (Maintenance Manager); Manufacturing Department Manager | 3h |  |  |
| 106 | 1.9.3.3 | Budget request is sent to General Manager for approval |  | 1h | 2020-03-30 16:00 | 2020-03-30 17:00 | 105 | 2020-03-30 16:00 | 2020-03-30 17:00 | 1h | 2020-03-30 16:00 | 2020-03-30 17:00 | 43.31d | 2.12d |  | General Manager | 1h |  |  |
| 107 | 1.9.3.4 | Budget request granted from General Manager |  | 30min | 2020-04-02 09:00 | 2020-04-02 09:30 | 106 | 2020-04-02 09:00 | 2020-04-02 09:30 | 30min | 2020-04-02 09:00 | 2020-04-02 09:30 | 41.19d | 0d | start no earlier than 2020-04-02 09:00 | General Manager | 0.5h |  |  |
| 108 | 1.9.3.5 | Order placed for the insulating material with proper manual instructions |  | 1h | 2020-04-02 09:30 | 2020-04-02 10:30 | 107 | 2020-04-02 09:30 | 2020-04-02 10:30 | 1h | 2020-04-02 09:30 | 2020-04-02 10:30 | 41.19d | 5d |  | Project Manager (Maintenance Manager); Cost of Additional Accessories; Cost of Insulating Material [800%] | 1h | 3,700 | 3,700 |
| 109 | 1.9.3.6 | Shipment received for the insulation material |  | 1h | 2020-04-09 10:30 | 2020-04-09 11:30 | 108 | 2020-04-09 10:30 | 2020-04-09 11:30 | 1h | 2020-04-09 10:30 | 2020-04-09 11:30 | 36.19d | 0d | start no earlier than 2020-04-09 10:30 | Clerk | 1h |  |  |
| 110 | 1.9.3.7 | Forming of the boiler team to perform insulation |  | 4h | 2020-04-09 11:30 | 2020-04-09 16:30 | 109 | 2020-04-09 11:30 | 2020-04-09 16:30 | 4h | 2020-04-09 11:30 | 2020-04-09 16:30 | 36.19d | 0.19d |  | Boiler Team of Inhouse Workers [0.1%]; Equipment Representative Employee (Boiler); Project Manager (Maintenance Manager) | 8h |  |  |
| 111 | 1.9.3.8 | Boiler steam pipe insulation by the boiler team |  | 6h | 2020-04-10 09:00 | 2020-04-10 16:00 | 110 | 2020-04-10 09:00 | 2020-04-10 16:00 | 6h | 2020-04-10 09:00 | 2020-04-10 16:00 | 36d |  | start no earlier than 2020-04-10 09:00 | Boiler Team of Inhouse Workers [0.1%] |  | 720 | 720 |
| 112 | 1.9.4 | Recovery time period if recommendation not finished on time |  | 1.25d | 2020-04-10 16:00 | 2020-04-23 17:00 | 103 | 2020-04-10 16:00 | 2020-04-23 17:00 | 1.25d | 2020-04-10 16:00 | 2020-04-24 16:00 | 36d |  |  | Project Manager (Recovery Period) | 10h |  |  |
| 113 | 1.10 | Boiler Recommendations Completed | milestone | 0d | 2020-04-23 17:00 | 2020-04-23 17:00 | 89 | 2020-04-23 17:00 | 2020-04-23 17:00 | 0d | 2020-04-24 16:00 | 2020-04-24 16:00 | 58.38d |  |  |  |  |  |  |

| ID | WBS | Task | Type | Duration | Start | Finish | Predecessors | Baseline start | Baseline finish | Baseline duration | Baseline 1 start | Baseline 1 finish | Total slack | Free slack | Constraint | Resources | Work | Cost | Baseline cost |
| --- | --- | --- | --- | --- | --- | --- | --- | --- | --- | --- | --- | --- | --- | --- | --- | --- | --- | --- | --- |
| 115 | 1.11 | **Lighting Recommendations** |  | 30.5d | 2020-04-27 13:00 | 2020-06-08 17:00 | 89 | 2020-04-27 13:00 | 2020-06-08 17:00 | 30.5d | 2020-04-27 13:00 | 2020-05-27 17:00 | 26d | 0d |  |  | 47.5h | 61,169.67 | 61,169.67 |
| 116 | 1.11.1 | **Installing LED fixtures throughout the facility replacing the current lighting fixtures** |  | 20.5d | 2020-04-27 13:00 | 2020-05-25 17:00 |  | 2020-04-27 13:00 | 2020-05-25 17:00 | 20.5d | 2020-04-27 13:00 | 2020-05-13 17:00 | 26.88d | 0.88d |  |  | 37.5h | 61,169.67 | 61,169.67 |
| 117 | 1.11.1.1 | First meeting with the head of electrical operations, plant manager and project manager discussing the proper LED fixtures that can be installed |  | 3h | 2020-04-27 13:00 | 2020-04-27 16:00 |  | 2020-04-27 13:00 | 2020-04-27 16:00 | 3h | 2020-04-27 13:00 | 2020-04-27 16:00 | 34.69d | 0.25d | start no earlier than 2020-04-27 13:00 | Electrical Department Manager; Equipment Representative Employee (Lighting); Project Manager (Maintenance Manager) | 3h |  |  |
| 118 | 1.11.1.2 | Contact LED Lighting fixtures distributors and browsing the suitable fixtures that can be installed |  | 3h | 2020-04-28 09:00 | 2020-04-28 12:00 | 117 | 2020-04-28 09:00 | 2020-04-28 12:00 | 3h | 2020-04-28 09:00 | 2020-04-28 12:00 | 34.44d | 0d | start no earlier than 2020-04-28 09:00 | Project Manager (Maintenance Manager) | 3h |  |  |
| 119 | 1.11.1.3 | Discussions including discounts for purchase of large volume of fixtures and contractual terms. |  | 30min | 2020-04-28 13:00 | 2020-04-28 13:30 | 118 | 2020-04-28 13:00 | 2020-04-28 13:30 | 30min | 2020-04-28 13:00 | 2020-04-28 13:30 | 34.44d | 0.94d |  | Project Manager (Maintenance Manager) | 0.5h |  |  |
| 120 | 1.11.1.4 | Meeting of project manager, department manager and assigned electrical operations system head to finalize the purchase of LED lighting fixtures |  | 3h | 2020-04-29 13:00 | 2020-04-29 16:00 | 119 | 2020-04-29 13:00 | 2020-04-29 16:00 | 3h | 2020-04-29 13:00 | 2020-04-29 16:00 | 33.5d | 0d | start no earlier than 2020-04-29 13:00 | Electrical Department Manager; Equipment Representative Employee (Lighting); Project Manager (Maintenance Manager) | 3h |  |  |
| 121 | 1.11.1.5 | Budget request is sent to General Manager for approval |  | 1h | 2020-04-29 16:00 | 2020-04-29 17:00 | 120 | 2020-04-29 16:00 | 2020-04-29 17:00 | 1h | 2020-04-29 16:00 | 2020-04-29 17:00 | 33.5d | 2.12d |  | General Manager | 1h |  |  |
| 122 | 1.11.1.6 | Budget request granted from General Manager |  | 1h | 2020-05-04 09:00 | 2020-05-04 10:00 | 121 | 2020-05-04 09:00 | 2020-05-04 10:00 | 1h | 2020-05-04 09:00 | 2020-05-04 10:00 | 31.38d | 0d | start no earlier than 2020-05-04 09:00 | General Manager | 1h |  |  |
| 123 | 1.11.1.7 | Order placed for the LED fixtures |  | 1h | 2020-05-04 10:00 | 2020-05-04 11:00 | 122 | 2020-05-04 10:00 | 2020-05-04 11:00 | 1h | 2020-05-04 10:00 | 2020-05-04 11:00 | 31.38d | 5d |  | Project Manager (Maintenance Manager); Cost of LED Fixtures (Interior) [8000%]; Cost of LED Fixtures (Exterior) [18300%]; Cost of Occupancy Sensor (Exterior) [7100%]; Cost of Occupancy Sensor (Interior) [2500%] | 1h | 60,423 | 60,423 |
| 124 | 1.11.1.8 | Shipment received for LED fixtures with proper manual for installation |  | 1h | 2020-05-11 11:00 | 2020-05-11 12:00 | 123 | 2020-05-11 11:00 | 2020-05-11 12:00 | 1h | 2020-05-11 11:00 | 2020-05-11 12:00 | 26.38d | 0d | start no earlier than 2020-05-11 11:00 | Clerk | 1h |  |  |
| 125 | 1.11.1.9 | Forming an installation team and planning of installation of LED fixtures |  | 4h | 2020-05-11 13:00 | 2020-05-11 17:00 | 124 | 2020-05-11 13:00 | 2020-05-11 17:00 | 4h | 2020-05-11 13:00 | 2020-05-11 17:00 | 26.38d | 0.5d |  | Equipment Representative Employee (Lighting); Inhouse Worker Cost for installing LED Fixtures; Project Manager (Maintenance Manager) | 4h | 46.67 | 46.67 |
| 126 | 1.11.1.10 | installation of LED fixtures |  | 5d | 2020-05-12 13:00 | 2020-05-25 17:00 | 125 | 2020-05-12 13:00 | 2020-05-25 17:00 | 5d | 2020-05-12 08:00 | 2020-05-13 17:00 | 26.38d |  |  | Inhouse Worker Cost for installing LED Fixtures [125%] | 20h | 700 | 700 |
| 127 | 1.11.2 | Recovery time period if recommendation not finished on time |  | 1.25d | 2020-05-26 16:00 | 2020-06-08 17:00 | 116 | 2020-05-26 16:00 | 2020-06-08 17:00 | 1.25d | 2020-05-14 08:00 | 2020-05-27 17:00 | 26d |  | start no earlier than 2020-05-14 16:00 | Project Manager (Recovery Period) | 10h |  |  |
| 128 | 1.12 | Lighting Recommendations Completed | milestone | 0d | 2020-06-08 17:00 | 2020-06-08 17:00 | 115 | 2020-06-08 17:00 | 2020-06-08 17:00 | 0d | 2020-05-27 17:00 | 2020-05-27 17:00 | 26.38d |  |  |  |  |  |  |
| 130 | 1.13 | All recommendations from IAC are successfully implemented | milestone | 0d | 2020-06-08 17:00 | 2020-06-08 17:00 | 115 | 2020-06-08 17:00 | 2020-06-08 17:00 | 0d | 2020-05-27 17:00 | 2020-05-27 17:00 | 26.38d |  |  |  |  |  |  |
| 132 | 1.14 | **Meetings and Reporting** |  | 217.25d | 2019-09-02 09:00 | 2020-07-01 11:00 |  | 2019-09-02 09:00 | 2020-07-01 11:00 | 217.25d | 2019-09-02 09:00 | 2020-07-01 11:00 | 10d |  |  |  | 22h |  |  |
| 133 | 1.14.1 | **Total energy bill analysis and comparision with previous month bills. Also, project implementation report is submitted to General manager** |  | 217.25d | 2019-09-02 09:00 | 2020-07-01 11:00 |  | 2019-09-02 09:00 | 2020-07-01 11:00 | 217.25d | 2019-09-02 09:00 | 2020-07-01 11:00 | 10d |  |  |  | 22h |  |  |
| 134 | 1.14.1.1 | Total energy bill analysis and comparision with previous month bills. Also, project implementation report is submitted to General manager 1 |  | 2h | 2019-09-02 09:00 | 2019-09-02 11:00 |  | 2019-09-02 09:00 | 2019-09-02 11:00 | 2h | 2019-09-02 09:00 | 2019-09-02 11:00 | 227d |  | start no earlier than 2019-09-02 09:00 | Departmental Managers; General Manager; Project Manager (Maintenance Manager) | 2h |  |  |
| 135 | 1.14.1.2 | Total energy bill analysis and comparision with previous month bills. Also, project implementation report is submitted to General manager 2 |  | 2h | 2019-10-01 09:00 | 2019-10-01 11:00 |  | 2019-10-01 09:00 | 2019-10-01 11:00 | 2h | 2019-10-01 09:00 | 2019-10-01 11:00 | 206d |  | start no earlier than 2019-10-01 09:00 | Departmental Managers; General Manager; Project Manager (Maintenance Manager) | 2h |  |  |
| 136 | 1.14.1.3 | Total energy bill analysis and comparision with previous month bills. Also, project implementation report is submitted to General manager 3 |  | 2h | 2019-11-01 09:00 | 2019-11-01 11:00 |  | 2019-11-01 09:00 | 2019-11-01 11:00 | 2h | 2019-11-01 09:00 | 2019-11-01 11:00 | 183d |  | start no earlier than 2019-11-01 09:00 | Departmental Managers; General Manager; Project Manager (Maintenance Manager) | 2h |  |  |
| 137 | 1.14.1.4 | Total energy bill analysis and comparision with previous month bills. Also, project implementation report is submitted to General manager 4 |  | 2h | 2019-12-02 09:00 | 2019-12-02 11:00 |  | 2019-12-02 09:00 | 2019-12-02 11:00 | 2h | 2019-12-02 09:00 | 2019-12-02 11:00 | 162d |  | start no earlier than 2019-12-02 09:00 | Departmental Managers; General Manager; Project Manager (Maintenance Manager) | 2h |  |  |
| 138 | 1.14.1.5 | Total energy bill analysis and comparision with previous month bills. Also, project implementation report is submitted to General manager 5 |  | 2h | 2020-01-01 09:00 | 2020-01-01 11:00 |  | 2020-01-01 09:00 | 2020-01-01 11:00 | 2h | 2020-01-01 09:00 | 2020-01-01 11:00 | 140d |  | start no earlier than 2020-01-01 09:00 | Departmental Managers; General Manager; Project Manager (Maintenance Manager) | 2h |  |  |
| 139 | 1.14.1.6 | Total energy bill analysis and comparision with previous month bills. Also, project implementation report is submitted to General manager 6 |  | 2h | 2020-02-03 09:00 | 2020-02-03 11:00 |  | 2020-02-03 09:00 | 2020-02-03 11:00 | 2h | 2020-02-03 09:00 | 2020-02-03 11:00 | 117d |  | start no earlier than 2020-02-03 09:00 | Departmental Managers; General Manager; Project Manager (Maintenance Manager) | 2h |  |  |
| 140 | 1.14.1.7 | Total energy bill analysis and comparision with previous month bills. Also, project implementation report is submitted to General manager 7 |  | 2h | 2020-03-02 09:00 | 2020-03-02 11:00 |  | 2020-03-02 09:00 | 2020-03-02 11:00 | 2h | 2020-03-02 09:00 | 2020-03-02 11:00 | 97d |  | start no earlier than 2020-03-02 09:00 | Departmental Managers; General Manager; Project Manager (Maintenance Manager) | 2h |  |  |
| 141 | 1.14.1.8 | Total energy bill analysis and comparision with previous month bills. Also, project implementation report is submitted to General manager 8 |  | 2h | 2020-04-01 09:00 | 2020-04-01 11:00 |  | 2020-04-01 09:00 | 2020-04-01 11:00 | 2h | 2020-04-01 09:00 | 2020-04-01 11:00 | 75d |  | start no earlier than 2020-04-01 09:00 | Departmental Managers; General Manager; Project Manager (Maintenance Manager) | 2h |  |  |
| 142 | 1.14.1.9 | Total energy bill analysis and comparision with previous month bills. Also, project implementation report is submitted to General manager 9 |  | 2h | 2020-05-01 09:00 | 2020-05-01 11:00 |  | 2020-05-01 09:00 | 2020-05-01 11:00 | 2h | 2020-05-01 09:00 | 2020-05-01 11:00 | 53d |  | start no earlier than 2020-05-01 09:00 | Departmental Managers; General Manager; Project Manager (Maintenance Manager) | 2h |  |  |
| 143 | 1.14.1.10 | Total energy bill analysis and comparision with previous month bills. Also, project implementation report is submitted to General manager 10 |  | 2h | 2020-06-01 09:00 | 2020-06-01 11:00 |  | 2020-06-01 09:00 | 2020-06-01 11:00 | 2h | 2020-06-01 09:00 | 2020-06-01 11:00 | 32d |  | start no earlier than 2020-06-01 09:00 | Departmental Managers; General Manager; Project Manager (Maintenance Manager) | 2h |  |  |
| 144 | 1.14.1.11 | Total energy bill analysis and comparision with previous month bills. Also, project implementation report is submitted to General manager 11 |  | 2h | 2020-07-01 09:00 | 2020-07-01 11:00 |  | 2020-07-01 09:00 | 2020-07-01 11:00 | 2h | 2020-07-01 09:00 | 2020-07-01 11:00 | 10d |  | start no earlier than 2020-07-01 09:00 | Departmental Managers; General Manager; Project Manager (Maintenance Manager) | 2h |  |  |
| 146 | 1.15 | Feedback about the report is provided to IAC Lead Author | milestone | 0d | 2020-07-15 11:00 | 2020-07-15 11:00 | 132 | 2020-07-15 11:00 | 2020-07-15 11:00 | 0d |  |  | 0d |  | start no earlier than 2020-07-15 11:00 | Project Manager (Maintenance Manager) |  |  |  |
